# FIRST_2994_2013_Fab

How a schedule from MS Project changed from version to version. A marks actual dates.

## Version 1 (saved 2013-01-18)

| ID | WBS | Task | Duration | Start | Finish | Predecessors | Total float | Constraint |
| --- | --- | --- | --- | --- | --- | --- | --- | --- |
| 1 | 1 | **Build Season Milestones** | 26d | 2013-01-05 | 2013-02-19 |  | 27.86d |  |
| 2 |  | Kickoff | 0d | 2013-01-05 | 2013-01-05 |  | 53.86d |  |
| 3 |  | Stop-Build Day | 0d | 2013-02-19 | 2013-02-19 |  | 27.86d | start no earlier than 2013-02-19 |
| 4 | 2 | **Hardware Milestones** | 21.29d? | 2013-01-05 | 2013-02-11 |  | 32.57d |  |
| 5 |  | CAD Done | 1d? | 2013-01-05 | 2013-01-05 |  | 52.86d |  |
| 6 |  | Plyboy Compressed Air Charging System Done | 0d | 2013-01-05 | 2013-01-05 |  | 53.86d |  |
| 7 |  | Whammo Compressed Air Charging System Done | 0d | 2013-01-05 | 2013-01-05 |  | 53.86d |  |
| 8 |  | Whammo Driving Mechanism Done | 0d | 2013-01-05 | 2013-01-05 | 37 | 52.86d |  |
| 9 |  | Whammo Frisbee Collector Done | 0d | 2013-01-05 | 2013-01-05 | 44 | 52.86d |  |
| 10 |  | Whammo Shooter Done | 0d | 2013-01-05 | 2013-01-05 | 51 | 52.86d |  |
| 11 |  | Whammo Climb Mechanism Done | 0d | 2013-01-05 | 2013-01-05 | 58 | 52.86d |  |
| 12 |  | Whammo Hardware Complete | 0d | 2013-02-11 | 2013-02-11 |  | 32.57d | finish no earlier than 2013-02-11 |
| 13 | 3 | **Competition Season** | 53.86d? | 2013-01-05 | 2013-04-08 |  | 0d |  |
| 14 |  | FRC Greater Toronto East Regional | 6.86d | 2013-03-07 | 2013-03-18 |  | 12d | start no earlier than 2013-03-07 |
| 15 |  | FRC Greater Toronto West Regional | 6.86d | 2013-03-28 | 2013-04-08 |  | 0d | start no earlier than 2013-03-28 |
| 16 |  | Read Manuals | 1d? | 2013-01-05 | 2013-01-05 |  | 52.86d |  |
| 17 |  | Game Analysis | 1d? | 2013-01-05 | 2013-01-05 |  | 52.86d |  |
| 18 |  | Game Strategy | 1d? | 2013-01-05 | 2013-01-05 |  | 52.86d |  |
| 19 | 4 | **Fabricate Field Parts** | 1d? | 2013-01-05 | 2013-01-05 |  | 52.86d |  |
| 20 |  | Fabricate Pyramid Parts | 1d? | 2013-01-05 | 2013-01-05 |  | 52.86d |  |
| 21 |  | Fabricate Goal Parts | 1d? | 2013-01-05 | 2013-01-05 |  | 52.86d |  |
| 22 |  | Fabricate Wall Parts | 1d? | 2013-01-05 | 2013-01-05 |  | 52.86d |  |
| 23 | 5 | **Assemble Field** | 1d? | 2013-01-05 | 2013-01-05 |  | 52.86d |  |
| 24 |  | Assemble Pyramid | 1d? | 2013-01-05 | 2013-01-05 |  | 52.86d |  |
| 25 |  | Assemble Goals | 1d? | 2013-01-05 | 2013-01-05 |  | 52.86d |  |
| 26 |  | Assemble Walls | 1d? | 2013-01-05 | 2013-01-05 |  | 52.86d |  |
| 27 | 6 | **Assemble Gearbox** | 1d? | 2013-01-05 | 2013-01-05 |  | 52.86d |  |
| 28 |  | WhammoA Gearbox | 1d? | 2013-01-05 | 2013-01-05 |  | 52.86d |  |
| 29 |  | WhammoB Gearbox | 1d? | 2013-01-05 | 2013-01-05 |  | 52.86d |  |
| 30 |  | Order Mechanical Parts | 1d? | 2013-01-05 | 2013-01-05 |  | 52.86d |  |
| 31 | 7 | **Fabricate Robot Parts** | 1d? | 2013-01-05 | 2013-01-05 |  | 52.86d |  |
| 32 |  | WhammoA Robot Parts | 1d? | 2013-01-05 | 2013-01-05 |  | 52.86d |  |
| 33 |  | WhammoB Robot Parts | 1d? | 2013-01-05 | 2013-01-05 |  | 52.86d |  |
| 34 | 8 | **Assemble Drive Frame** | 1d? | 2013-01-05 | 2013-01-05 |  | 52.86d |  |
| 35 |  | WhammoA Assemble Drive Frame | 1d? | 2013-01-05 | 2013-01-05 |  | 52.86d |  |
| 36 |  | WhammoA Wiring for Drive System | 1d? | 2013-01-05 | 2013-01-05 |  | 52.86d |  |
| 37 |  | WhammoA Mechanical Testing for Drive Frame | 1d? | 2013-01-05 | 2013-01-05 |  | 52.86d |  |
| 38 |  | WhammoB Assemble Drive Frame | 1d? | 2013-01-05 | 2013-01-05 |  | 52.86d |  |
| 39 |  | WhammoB Wiring for Drive System | 1d? | 2013-01-05 | 2013-01-05 |  | 52.86d |  |
| 40 |  | WhammoB Mechanical Testing for Drive Frame | 1d? | 2013-01-05 | 2013-01-05 |  | 52.86d |  |
| 41 | 9 | **Assemble Frisbee Collector** | 1d? | 2013-01-05 | 2013-01-05 |  | 52.86d |  |
| 42 |  | WhammoA Assemble Frisbee Collector | 1d? | 2013-01-05 | 2013-01-05 |  | 52.86d |  |
| 43 |  | WhammoA Wiring for Frisbee Collector | 1d? | 2013-01-05 | 2013-01-05 |  | 52.86d |  |
| 44 |  | WhammoA Mechanical Testing for Frisbee Collector | 1d? | 2013-01-05 | 2013-01-05 |  | 52.86d |  |
| 45 |  | WhammoB Assemble Frisbee Collector | 1d? | 2013-01-05 | 2013-01-05 |  | 52.86d |  |
| 46 |  | WhammoB Wiring for Frisbee Collector | 1d? | 2013-01-05 | 2013-01-05 |  | 52.86d |  |
| 47 |  | WhammoB Mechanical Testing for Frisbee Collector | 1d? | 2013-01-05 | 2013-01-05 |  | 52.86d |  |
| 48 | 10 | **Assemble Shooter** | 1d? | 2013-01-05 | 2013-01-05 |  | 52.86d |  |
| 49 |  | WhammoA Assemble Shooter | 1d? | 2013-01-05 | 2013-01-05 |  | 52.86d |  |
| 50 |  | WhammoA Wiring for Shooter | 1d? | 2013-01-05 | 2013-01-05 |  | 52.86d |  |
| 51 |  | WhammoA Mechanical Testing for Shooter | 1d? | 2013-01-05 | 2013-01-05 |  | 52.86d |  |
| 52 |  | WhammoB Assemble Shooter | 1d? | 2013-01-05 | 2013-01-05 |  | 52.86d |  |
| 53 |  | WhammoB Wiring for Shooter | 1d? | 2013-01-05 | 2013-01-05 |  | 52.86d |  |
| 54 |  | WhammoB Mechanical Testing for Shooter | 1d? | 2013-01-05 | 2013-01-05 |  | 52.86d |  |
| 55 | 11 | **Assemble Climber** | 1d? | 2013-01-05 | 2013-01-05 |  | 52.86d |  |
| 56 |  | WhammoA Assemble Climber | 1d? | 2013-01-05 | 2013-01-05 |  | 52.86d |  |
| 57 |  | WhammoA Wiring for Climber | 1d? | 2013-01-05 | 2013-01-05 |  | 52.86d |  |
| 58 |  | WhammoA Mechanical Testing for Climber | 1d? | 2013-01-05 | 2013-01-05 |  | 52.86d |  |
| 59 |  | WhammoB Assemble Climber | 1d? | 2013-01-05 | 2013-01-05 |  | 52.86d |  |
| 60 |  | WhammoB Wiring for Climber | 1d? | 2013-01-05 | 2013-01-05 |  | 52.86d |  |
| 61 |  | WhammoB Mechanical Testing for Climber | 1d? | 2013-01-05 | 2013-01-05 |  | 52.86d |  |
| 62 | 12 | **Prototypes** | 1d? | 2013-01-05 | 2013-01-05 |  | 52.86d |  |
| 63 |  | Drive Frame | 1d? | 2013-01-05 | 2013-01-05 |  | 52.86d |  |
| 64 |  | Frisbee Collector | 1d? | 2013-01-05 | 2013-01-05 |  | 52.86d |  |
| 65 |  | Shooter | 1d? | 2013-01-05 | 2013-01-05 |  | 52.86d |  |
| 66 |  | Climber | 1d? | 2013-01-05 | 2013-01-05 |  | 52.86d |  |

## Version 2 (saved 2013-01-22)

Note of the change: Initial Estimates from Andrew

Last finish stays 2013-04-08.

Added:

| ID | Task | Duration | Start | Finish | Constraint |
| --- | --- | --- | --- | --- | --- |
| 6 | parts received from protocase | 0d | 2013-01-30 | 2013-01-30 | start no earlier than 2013-01-30 |
| 17 | start of fabrication | 0d | 2013-01-07 | 2013-01-07 | start no earlier than 2013-01-07 |
| 18 | First day at practice field | 0d | 2013-01-26 | 2013-01-26 | start no earlier than 2013-01-26 |
| 27 | Assemble Floor | 1d | 2013-01-26 | 2013-01-26 |  |

Removed: 16 Read Manuals; 17 Game Analysis; 18 Game Strategy; 30 Order Mechanical Parts

Changed:

| ID | Task | Start | Finish | Duration | Total float | Predecessors | Other |
| --- | --- | --- | --- | --- | --- | --- | --- |
| 1 | **Build Season Milestones** |  |  |  |  |  | baseline start none → 2013-01-05; baseline finish none → 2013-02-19 |
| 2 | Kickoff |  |  |  |  |  | baseline start none → 2013-01-05; baseline finish none → 2013-01-05 |
| 3 | Stop-Build Day |  |  |  |  |  | baseline start none → 2013-02-19; baseline finish none → 2013-02-19 |
| 4 | **Hardware Milestones** |  |  |  |  |  | baseline start none → 2013-01-05; baseline finish none → 2013-02-11 |
| 5 | CAD Done | 2013-01-05 → 2013-01-23 (+18d) | 2013-01-05 → 2013-01-23 (+18d) |  | 52.86d → 37.86d |  | constraint none → start no earlier than 2013-01-23; baseline start none → 2013-01-23; baseline finish none → 2013-01-23 |
| 7 | Plyboy Compressed Air Charging System Done |  |  |  |  |  | baseline start none → 2013-01-05; baseline finish none → 2013-01-05 |
| 8 | Whammo Compressed Air Charging System Done |  |  |  |  |  | baseline start none → 2013-01-05; baseline finish none → 2013-01-05 |
| 9 | Whammo Driving Mechanism Done | 2013-01-05 → 2013-02-02 (+28d) | 2013-01-05 → 2013-02-02 (+28d) |  | 52.86d → 36.86d |  | baseline start none → 2013-02-02; baseline finish none → 2013-02-02 |
| 10 | Whammo Frisbee Collector Done | 2013-01-05 → 2013-01-07 (+2d) | 2013-01-05 → 2013-01-07 (+2d) |  | 52.86d → 51.86d |  | baseline start none → 2013-01-07; baseline finish none → 2013-01-07 |
| 11 | Whammo Shooter Done | 2013-01-05 → 2013-01-07 (+2d) | 2013-01-05 → 2013-01-07 (+2d) |  | 52.86d → 51.86d |  | baseline start none → 2013-01-07; baseline finish none → 2013-01-07 |
| 12 | Whammo Climb Mechanism Done | 2013-01-05 → 2013-01-07 (+2d) | 2013-01-05 → 2013-01-07 (+2d) |  | 52.86d → 51.86d |  | baseline start none → 2013-01-07; baseline finish none → 2013-01-07 |
| 13 | Whammo Hardware Complete |  |  |  |  |  | baseline start none → 2013-02-11; baseline finish none → 2013-02-11 |
| 14 | **Competition Season** | 2013-01-05 → 2013-03-07 (+61d) |  | 53.86d? → 18.86d |  |  | baseline start none → 2013-01-05; baseline finish none → 2013-04-08 |
| 15 | FRC Greater Toronto East Regional |  |  |  |  |  | baseline start none → 2013-03-07; baseline finish none → 2013-03-18 |
| 16 | FRC Greater Toronto West Regional |  |  |  |  |  | baseline start none → 2013-03-28; baseline finish none → 2013-04-08 |
| 19 | **Fabricate Field Parts** | 2013-01-05 → 2013-01-26 (+21d) | 2013-01-05 → 2013-02-09 (+35d) | 1d? → 9d | 52.86d → 32.86d | none → 18 | baseline start none → 2013-01-26; baseline finish none → 2013-02-09 |
| 20 | Fabricate Pyramid Parts | 2013-01-05 → 2013-01-26 (+21d) | 2013-01-05 → 2013-02-09 (+35d) | 1d? → 9d | 52.86d → 32.86d |  | baseline start none → 2013-01-26; baseline finish none → 2013-02-09 |
| 21 | Fabricate Goal Parts | 2013-01-05 → 2013-01-26 (+21d) | 2013-01-05 → 2013-02-06 (+32d) | 1d? → 7d | 52.86d → 34.86d |  | baseline start none → 2013-01-26; baseline finish none → 2013-02-06 |
| 22 | Fabricate Wall Parts | 2013-01-05 → 2013-01-26 (+21d) | 2013-01-05 → 2013-01-28 (+23d) | 1d? → 2d | 52.86d → 39.86d |  | baseline start none → 2013-01-26; baseline finish none → 2013-01-28 |
| 23 | **Assemble Field** | 2013-01-05 → 2013-01-26 (+21d) | 2013-01-05 → 2013-01-26 (+21d) | 1d? → 1d | 52.86d → 40.86d | none → 17, 18 | baseline start none → 2013-01-26; baseline finish none → 2013-01-26 |
| 24 | Assemble Pyramid | 2013-01-05 → 2013-01-26 (+21d) | 2013-01-05 → 2013-01-26 (+21d) | 1d? → 1d | 52.86d → 40.86d |  | resources none → Andrew Verheyden; Tyler Cooke; Liam Pelly; Blair Hulaj; Paul McDonough; baseline start none → 2013-01-26; baseline finish none → 2013-01-26 |
| 25 | Assemble Goals | 2013-01-05 → 2013-01-26 (+21d) | 2013-01-05 → 2013-01-26 (+21d) | 1d? → 1d | 52.86d → 40.86d |  | baseline start none → 2013-01-26; baseline finish none → 2013-01-26 |
| 26 | Assemble Walls | 2013-01-05 → 2013-01-26 (+21d) | 2013-01-05 → 2013-01-26 (+21d) | 1d? → 1d | 52.86d → 40.86d |  | baseline start none → 2013-01-26; baseline finish none → 2013-01-26 |
| 28 | **Assemble Gearbox** | 2013-01-05 → 2013-01-16 (+11d) | 2013-01-05 → 2013-01-16 (+11d) | 1d? → 1d | 52.86d → 46.86d | none → 17 | baseline start none → 2013-01-16; baseline finish none → 2013-01-16 |
| 29 | WhammoA Gearbox | 2013-01-05 → 2013-01-16 (+11d) | 2013-01-05 → 2013-01-16 (+11d) | 1d? → 1d | 52.86d → 46.86d |  | constraint none → start no earlier than 2013-01-16; baseline start none → 2013-01-16; baseline finish none → 2013-01-16 |
| 30 | WhammoB Gearbox | 2013-01-05 → 2013-01-16 (+11d) | 2013-01-05 → 2013-01-16 (+11d) | 1d? → 1d | 52.86d → 46.86d |  | constraint none → start no earlier than 2013-01-16; baseline start none → 2013-01-16; baseline finish none → 2013-01-16 |
| 31 | **Fabricate Robot Parts** | 2013-01-05 → 2013-01-24 (+19d) | 2013-01-05 → 2013-01-31 (+26d) | 1d? → 5d | 52.86d → 37.86d | none → 17, 5 | baseline start none → 2013-01-24; baseline finish none → 2013-01-31 |
| 32 | WhammoA Robot Parts | 2013-01-05 → 2013-01-24 (+19d) | 2013-01-05 → 2013-01-31 (+26d) | 1d? → 5d | 52.86d → 37.86d |  | baseline start none → 2013-01-24; baseline finish none → 2013-01-31 |
| 33 | WhammoB Robot Parts | 2013-01-05 → 2013-01-24 (+19d) | 2013-01-05 → 2013-01-31 (+26d) | 1d? → 5d | 52.86d → 37.86d |  | baseline start none → 2013-01-24; baseline finish none → 2013-01-31 |
| 34 | **Assemble Drive Frame** | 2013-01-05 → 2013-01-30 (+25d) | 2013-01-05 → 2013-02-02 (+28d) | 1d? → 3d? | 52.86d → 36.86d | none → 17, 6 | baseline start none → 2013-01-30; baseline finish none → 2013-02-02 |
| 35 | WhammoA Assemble Drive Frame | 2013-01-05 → 2013-01-30 (+25d) | 2013-01-05 → 2013-01-30 (+25d) |  | 52.86d → 36.86d |  | baseline start none → 2013-01-30; baseline finish none → 2013-01-30 |
| 36 | WhammoA Wiring for Drive System | 2013-01-05 → 2013-01-31 (+26d) | 2013-01-05 → 2013-01-31 (+26d) |  | 52.86d → 36.86d | none → 35 | baseline start none → 2013-01-31; baseline finish none → 2013-01-31 |
| 37 | WhammoA Mechanical Testing for Drive Frame | 2013-01-05 → 2013-02-02 (+28d) | 2013-01-05 → 2013-02-02 (+28d) |  | 52.86d → 36.86d | none → 36 | baseline start none → 2013-02-02; baseline finish none → 2013-02-02 |
| 38 | WhammoB Assemble Drive Frame | 2013-01-05 → 2013-01-30 (+25d) | 2013-01-05 → 2013-01-30 (+25d) |  | 52.86d → 36.86d |  | baseline start none → 2013-01-30; baseline finish none → 2013-01-30 |
| 39 | WhammoB Wiring for Drive System | 2013-01-05 → 2013-01-31 (+26d) | 2013-01-05 → 2013-01-31 (+26d) |  | 52.86d → 36.86d | none → 38 | baseline start none → 2013-01-31; baseline finish none → 2013-01-31 |
| 40 | WhammoB Mechanical Testing for Drive Frame | 2013-01-05 → 2013-02-02 (+28d) | 2013-01-05 → 2013-02-02 (+28d) |  | 52.86d → 36.86d | none → 39 | baseline start none → 2013-02-02; baseline finish none → 2013-02-02 |
| 41 | **Assemble Frisbee Collector** | 2013-01-05 → 2013-01-07 (+2d) | 2013-01-05 → 2013-01-07 (+2d) |  | 52.86d → 51.86d | none → 17 | baseline start none → 2013-01-07; baseline finish none → 2013-01-07 |
| 42 | WhammoA Assemble Frisbee Collector | 2013-01-05 → 2013-01-07 (+2d) | 2013-01-05 → 2013-01-07 (+2d) |  | 52.86d → 51.86d |  | baseline start none → 2013-01-07; baseline finish none → 2013-01-07 |
| 43 | WhammoA Wiring for Frisbee Collector | 2013-01-05 → 2013-01-07 (+2d) | 2013-01-05 → 2013-01-07 (+2d) |  | 52.86d → 51.86d |  | baseline start none → 2013-01-07; baseline finish none → 2013-01-07 |
| 44 | WhammoA Mechanical Testing for Frisbee Collector | 2013-01-05 → 2013-01-07 (+2d) | 2013-01-05 → 2013-01-07 (+2d) |  | 52.86d → 51.86d |  | baseline start none → 2013-01-07; baseline finish none → 2013-01-07 |
| 45 | WhammoB Assemble Frisbee Collector | 2013-01-05 → 2013-01-07 (+2d) | 2013-01-05 → 2013-01-07 (+2d) |  | 52.86d → 51.86d |  | baseline start none → 2013-01-07; baseline finish none → 2013-01-07 |
| 46 | WhammoB Wiring for Frisbee Collector | 2013-01-05 → 2013-01-07 (+2d) | 2013-01-05 → 2013-01-07 (+2d) |  | 52.86d → 51.86d |  | baseline start none → 2013-01-07; baseline finish none → 2013-01-07 |
| 47 | WhammoB Mechanical Testing for Frisbee Collector | 2013-01-05 → 2013-01-07 (+2d) | 2013-01-05 → 2013-01-07 (+2d) |  | 52.86d → 51.86d |  | baseline start none → 2013-01-07; baseline finish none → 2013-01-07 |
| 48 | **Assemble Shooter** | 2013-01-05 → 2013-01-07 (+2d) | 2013-01-05 → 2013-01-07 (+2d) |  | 52.86d → 51.86d | none → 17 | baseline start none → 2013-01-07; baseline finish none → 2013-01-07 |
| 49 | WhammoA Assemble Shooter | 2013-01-05 → 2013-01-07 (+2d) | 2013-01-05 → 2013-01-07 (+2d) |  | 52.86d → 51.86d |  | baseline start none → 2013-01-07; baseline finish none → 2013-01-07 |
| 50 | WhammoA Wiring for Shooter | 2013-01-05 → 2013-01-07 (+2d) | 2013-01-05 → 2013-01-07 (+2d) |  | 52.86d → 51.86d |  | baseline start none → 2013-01-07; baseline finish none → 2013-01-07 |
| 51 | WhammoA Mechanical Testing for Shooter | 2013-01-05 → 2013-01-07 (+2d) | 2013-01-05 → 2013-01-07 (+2d) |  | 52.86d → 51.86d |  | baseline start none → 2013-01-07; baseline finish none → 2013-01-07 |
| 52 | WhammoB Assemble Shooter | 2013-01-05 → 2013-01-07 (+2d) | 2013-01-05 → 2013-01-07 (+2d) |  | 52.86d → 51.86d |  | baseline start none → 2013-01-07; baseline finish none → 2013-01-07 |
| 53 | WhammoB Wiring for Shooter | 2013-01-05 → 2013-01-07 (+2d) | 2013-01-05 → 2013-01-07 (+2d) |  | 52.86d → 51.86d |  | baseline start none → 2013-01-07; baseline finish none → 2013-01-07 |
| 54 | WhammoB Mechanical Testing for Shooter | 2013-01-05 → 2013-01-07 (+2d) | 2013-01-05 → 2013-01-07 (+2d) |  | 52.86d → 51.86d |  | baseline start none → 2013-01-07; baseline finish none → 2013-01-07 |
| 55 | **Assemble Climber** | 2013-01-05 → 2013-01-07 (+2d) | 2013-01-05 → 2013-01-07 (+2d) |  | 52.86d → 51.86d | none → 17 | baseline start none → 2013-01-07; baseline finish none → 2013-01-07 |
| 56 | WhammoA Assemble Climber | 2013-01-05 → 2013-01-07 (+2d) | 2013-01-05 → 2013-01-07 (+2d) |  | 52.86d → 51.86d |  | baseline start none → 2013-01-07; baseline finish none → 2013-01-07 |
| 57 | WhammoA Wiring for Climber | 2013-01-05 → 2013-01-07 (+2d) | 2013-01-05 → 2013-01-07 (+2d) |  | 52.86d → 51.86d |  | baseline start none → 2013-01-07; baseline finish none → 2013-01-07 |
| 58 | WhammoA Mechanical Testing for Climber | 2013-01-05 → 2013-01-07 (+2d) | 2013-01-05 → 2013-01-07 (+2d) |  | 52.86d → 51.86d |  | baseline start none → 2013-01-07; baseline finish none → 2013-01-07 |
| 59 | WhammoB Assemble Climber | 2013-01-05 → 2013-01-07 (+2d) | 2013-01-05 → 2013-01-07 (+2d) |  | 52.86d → 51.86d |  | baseline start none → 2013-01-07; baseline finish none → 2013-01-07 |
| 60 | WhammoB Wiring for Climber | 2013-01-05 → 2013-01-07 (+2d) | 2013-01-05 → 2013-01-07 (+2d) |  | 52.86d → 51.86d |  | baseline start none → 2013-01-07; baseline finish none → 2013-01-07 |
| 61 | WhammoB Mechanical Testing for Climber | 2013-01-05 → 2013-01-07 (+2d) | 2013-01-05 → 2013-01-07 (+2d) |  | 52.86d → 51.86d |  | baseline start none → 2013-01-07; baseline finish none → 2013-01-07 |
| 62 | **Prototypes** | 2013-01-05 → 2013-01-07 (+2d) | 2013-01-05 → 2013-01-07 (+2d) |  | 52.86d → 51.86d | none → 17 | baseline start none → 2013-01-07; baseline finish none → 2013-01-07 |
| 63 | Drive Frame | 2013-01-05 → 2013-01-07 (+2d) | 2013-01-05 → 2013-01-07 (+2d) |  | 52.86d → 51.86d |  | baseline start none → 2013-01-07; baseline finish none → 2013-01-07 |
| 64 | Frisbee Collector | 2013-01-05 → 2013-01-07 (+2d) | 2013-01-05 → 2013-01-07 (+2d) |  | 52.86d → 51.86d |  | baseline start none → 2013-01-07; baseline finish none → 2013-01-07 |
| 65 | Shooter | 2013-01-05 → 2013-01-07 (+2d) | 2013-01-05 → 2013-01-07 (+2d) |  | 52.86d → 51.86d |  | baseline start none → 2013-01-07; baseline finish none → 2013-01-07 |
| 66 | Climber | 2013-01-05 → 2013-01-07 (+2d) | 2013-01-05 → 2013-01-07 (+2d) |  | 52.86d → 51.86d |  | baseline start none → 2013-01-07; baseline finish none → 2013-01-07 |

## Version 3 (saved 2013-01-23)

Note of the change: Initial Estimates from Andrew

Last finish stays 2013-04-08.

Changed:

| ID | Task | Start | Finish | Duration | Total float | Predecessors | Other |
| --- | --- | --- | --- | --- | --- | --- | --- |
| 4 | **Hardware Milestones** |  | 2013-02-11 → 2013-02-13 (+2d) | 21.29d? → 22.5d? | 32.57d → 31.36d |  |  |
| 9 | Whammo Driving Mechanism Done | 2013-02-02 → 2013-02-06 (+4d) | 2013-02-02 → 2013-02-06 (+4d) |  | 36.86d → 35.76d |  |  |
| 10 | Whammo Frisbee Collector Done | 2013-01-07 → 2013-02-04 (+28d) | 2013-01-07 → 2013-02-04 (+28d) |  | 51.86d → 36.66d |  |  |
| 11 | Whammo Shooter Done | 2013-01-07 → 2013-02-13 (+37d) | 2013-01-07 → 2013-02-13 (+37d) |  | 51.86d → 31.36d |  |  |
| 12 | Whammo Climb Mechanism Done | 2013-01-07 → 2013-02-13 (+37d) | 2013-01-07 → 2013-02-13 (+37d) |  | 51.86d → 31.66d |  |  |
| 19 | **Fabricate Field Parts** | 2013-01-26 → 2013-01-05 (-21d) | 2013-02-09 → 2013-01-23 (-17d) | 9d → 11d | 32.86d → 42.86d | 18 → none |  |
| 20 | Fabricate Pyramid Parts | 2013-01-26 → 2013-01-05 (-21d) | 2013-02-09 → 2013-01-23 (-17d) | 9d → 11d | 32.86d → 42.86d |  |  |
| 21 | Fabricate Goal Parts | 2013-01-26 → 2013-01-05 (-21d) | 2013-02-06 → 2013-01-16 (-21d) |  | 34.86d → 46.86d |  |  |
| 22 | Fabricate Wall Parts | 2013-01-26 → 2013-01-05 (-21d) | 2013-01-28 → 2013-01-07 (-21d) |  | 39.86d → 51.86d |  |  |
| 24 | Assemble Pyramid |  |  |  |  |  | resources Andrew Verheyden; Tyler Cooke; Liam Pelly; Blair Hulaj; Paul McDonough → Andrew Verheyden [25%]; Tyler Cooke [25%]; Liam Pelly [25%]; Blair Hulaj [25%]; Paul McDonough |
| 25 | Assemble Goals |  |  |  |  |  | resources none → Tyler Cooke [25%]; Andrew Verheyden [25%]; Liam Pelly [25%]; Blair Hulaj [25%]; Paul McDonough [25%] |
| 26 | Assemble Walls |  |  |  |  |  | resources none → Tyler Cooke [25%]; Andrew Verheyden [25%]; Liam Pelly [25%]; Blair Hulaj [25%]; Paul McDonough [25%] |
| 27 | Assemble Floor |  |  |  |  |  | resources none → Tyler Cooke [25%]; Andrew Verheyden [25%]; Liam Pelly [25%]; Blair Hulaj [25%]; Paul McDonough [25%] |
| 29 | WhammoA Gearbox |  |  |  |  |  | resources none → Andrew Verheyden [50%]; Liam Pelly [50%]; Blair Hulaj [50%] |
| 30 | WhammoB Gearbox |  |  |  |  |  | resources none → Andrew Verheyden [50%]; Liam Pelly [50%]; Blair Hulaj [50%] |
| 32 | WhammoA Robot Parts |  |  |  | 37.86d → 31.36d |  | resources none → Andrew Verheyden [50%]; Liam Pelly [50%]; Blair Hulaj [50%] |
| 33 | WhammoB Robot Parts |  |  |  | 37.86d → 31.36d |  | resources none → Andrew Verheyden [50%]; Liam Pelly [50%]; Blair Hulaj [50%] |
| 34 | **Assemble Drive Frame** | 2013-01-30 → 2013-02-02 (+3d) | 2013-02-02 → 2013-02-07 (+5d) | 3d? → 3.1d | 36.86d → 31.66d | 17, 6 → 17, 6, 31 |  |
| 35 | WhammoA Assemble Drive Frame | 2013-01-30 → 2013-02-02 (+3d) | 2013-01-30 → 2013-02-02 (+3d) | 1d? → 1d | 36.86d → 31.66d |  | resources none → Andrew Verheyden; Liam Pelly; Paul McDonough; Nicholas Loomes; James Prado |
| 36 | WhammoA Wiring for Drive System | 2013-01-31 → 2013-02-04 (+4d) | 2013-01-31 → 2013-02-04 (+4d) | 1d? → 1d | 36.86d → 31.66d |  | resources none → Hugh Carry; Andrew Verheyden; Robert Myszka; James Carr |
| 37 | WhammoA Mechanical Testing for Drive Frame | 2013-02-02 → 2013-02-06 (+4d) | 2013-02-02 → 2013-02-06 (+4d) | 1d? → 0.1d | 36.86d → 32.56d |  | resources none → Andrew Verheyden; Nicholas Loomes; Matthew Bailey; Paul McDonough |
| 38 | WhammoB Assemble Drive Frame | 2013-01-30 → 2013-02-02 (+3d) | 2013-01-30 → 2013-02-02 (+3d) | 1d? → 1d | 36.86d → 32.66d |  | resources none → Tyler Cooke; Brandon Bates; Bruno Chiaragato; Blair Hulaj; Robert Myszka |
| 39 | WhammoB Wiring for Drive System | 2013-01-31 → 2013-02-06 (+6d) | 2013-01-31 → 2013-02-06 (+6d) | 1d? → 1d | 36.86d → 31.66d | 38 → 38, 36 | resources none → Hugh Carry; Andrew Verheyden; Robert Myszka; James Carr |
| 40 | WhammoB Mechanical Testing for Drive Frame | 2013-02-02 → 2013-02-07 (+5d) | 2013-02-02 → 2013-02-07 (+5d) | 1d? → 0.1d | 36.86d → 31.66d | 39 → 39, 37 | resources none → Andrew Verheyden; Nicholas Loomes; Matthew Bailey; Paul McDonough |
| 41 | **Assemble Frisbee Collector** | 2013-01-07 → 2013-02-02 (+26d) | 2013-01-07 → 2013-02-07 (+31d) | 1d? → 4d | 51.86d → 31.36d | 17 → 17, 6, 31 |  |
| 42 | WhammoA Assemble Frisbee Collector | 2013-01-07 → 2013-02-02 (+26d) | 2013-01-07 → 2013-02-02 (+26d) | 1d? → 1d | 51.86d → 34.16d |  |  |
| 43 | WhammoA Wiring for Frisbee Collector | 2013-01-07 → 2013-02-04 (+28d) | 2013-01-07 → 2013-02-04 (+28d) | 1d? → 0.1d | 51.86d → 34.16d | none → 42 |  |
| 44 | WhammoA Mechanical Testing for Frisbee Collector | 2013-01-07 → 2013-02-04 (+28d) | 2013-01-07 → 2013-02-04 (+28d) | 1d? → 0.1d | 51.86d → 34.16d | none → 43 |  |
| 45 | WhammoB Assemble Frisbee Collector | 2013-01-07 → 2013-02-02 (+26d) | 2013-01-07 → 2013-02-04 (+28d) | 1d? → 2d | 51.86d → 31.36d |  |  |
| 46 | WhammoB Wiring for Frisbee Collector | 2013-01-07 → 2013-02-06 (+30d) | 2013-01-07 → 2013-02-06 (+30d) | 1d? → 1d | 51.86d → 31.36d | none → 45 |  |
| 47 | WhammoB Mechanical Testing for Frisbee Collector | 2013-01-07 → 2013-02-07 (+31d) | 2013-01-07 → 2013-02-07 (+31d) | 1d? → 1d | 51.86d → 31.36d | none → 46 |  |
| 48 | **Assemble Shooter** | 2013-01-07 → 2013-02-09 (+33d) | 2013-01-07 → 2013-02-13 (+37d) | 1d? → 2.5d | 51.86d → 31.36d | 17 → 17, 6, 41, 31 |  |
| 49 | WhammoA Assemble Shooter | 2013-01-07 → 2013-02-09 (+33d) | 2013-01-07 → 2013-02-09 (+33d) | 1d? → 1d | 51.86d → 31.36d |  |  |
| 50 | WhammoA Wiring for Shooter | 2013-01-07 → 2013-02-11 (+35d) | 2013-01-07 → 2013-02-11 (+35d) | 1d? → 0.5d | 51.86d → 31.36d | none → 49 |  |
| 51 | WhammoA Mechanical Testing for Shooter | 2013-01-07 → 2013-02-11 (+35d) | 2013-01-07 → 2013-02-13 (+37d) | 1d? → 1d | 51.86d → 31.36d | none → 50 |  |
| 52 | WhammoB Assemble Shooter | 2013-01-07 → 2013-02-09 (+33d) | 2013-01-07 → 2013-02-09 (+33d) | 1d? → 1d | 51.86d → 31.36d |  |  |
| 53 | WhammoB Wiring for Shooter | 2013-01-07 → 2013-02-11 (+35d) | 2013-01-07 → 2013-02-11 (+35d) | 1d? → 0.5d | 51.86d → 31.36d | none → 52 |  |
| 54 | WhammoB Mechanical Testing for Shooter | 2013-01-07 → 2013-02-11 (+35d) | 2013-01-07 → 2013-02-13 (+37d) | 1d? → 1d | 51.86d → 31.36d | none → 53 |  |
| 55 | **Assemble Climber** | 2013-01-07 → 2013-02-07 (+31d) | 2013-01-07 → 2013-02-13 (+37d) | 1d? → 3.1d | 51.86d → 31.66d | 17 → 17, 6, 31, 34 |  |
| 56 | WhammoA Assemble Climber | 2013-01-07 → 2013-02-07 (+31d) | 2013-01-07 → 2013-02-09 (+33d) | 1d? → 1d | 51.86d → 31.66d |  |  |
| 57 | WhammoA Wiring for Climber | 2013-01-07 → 2013-02-09 (+33d) | 2013-01-07 → 2013-02-09 (+33d) | 1d? → 0.1d | 51.86d → 31.66d | none → 56 |  |
| 58 | WhammoA Mechanical Testing for Climber | 2013-01-07 → 2013-02-09 (+33d) | 2013-01-07 → 2013-02-13 (+37d) | 1d? → 2d | 51.86d → 31.66d | none → 57 |  |
| 59 | WhammoB Assemble Climber | 2013-01-07 → 2013-02-07 (+31d) | 2013-01-07 → 2013-02-09 (+33d) | 1d? → 1d | 51.86d → 31.66d |  |  |
| 60 | WhammoB Wiring for Climber | 2013-01-07 → 2013-02-09 (+33d) | 2013-01-07 → 2013-02-09 (+33d) | 1d? → 0.1d | 51.86d → 31.66d | none → 59 |  |
| 61 | WhammoB Mechanical Testing for Climber | 2013-01-07 → 2013-02-09 (+33d) | 2013-01-07 → 2013-02-13 (+37d) | 1d? → 2d | 51.86d → 31.66d | none → 60 |  |
| 62 | **Prototypes** |  | 2013-01-07 → 2013-01-14 (+7d) | 1d? → 5d | 51.86d → 47.86d |  |  |
| 63 | Drive Frame |  |  | 1d? → 0d | 51.86d → 47.86d |  |  |
| 64 | Frisbee Collector |  |  | 1d? → 1d | 51.86d → 47.86d | none → 63 |  |
| 65 | Shooter | 2013-01-07 → 2013-01-09 (+2d) | 2013-01-07 → 2013-01-09 (+2d) | 1d? → 1d | 51.86d → 47.86d | none → 64 |  |
| 66 | Climber | 2013-01-07 → 2013-01-10 (+3d) | 2013-01-07 → 2013-01-14 (+7d) | 1d? → 3d | 51.86d → 47.86d | none → 65 |  |

## Version 4 (saved 2013-01-25)

Note of the change: Andrew's changes to Fab/Assembly plan

Last finish stays 2013-04-08.

Changed:

| ID | Task | Start | Finish | Duration | Total float | Predecessors | Other |
| --- | --- | --- | --- | --- | --- | --- | --- |
| 4 | **Hardware Milestones** |  | 2013-02-13 → 2013-02-14 (+1d) | 22.5d? → 23.2d? | 31.36d → 30.66d |  |  |
| 9 | Whammo Driving Mechanism Done | 2013-02-06 → 2013-02-09 (+3d) | 2013-02-06 → 2013-02-09 (+3d) |  | 35.76d → 33.76d |  |  |
| 10 | Whammo Frisbee Collector Done | 2013-02-04 → 2013-02-07 (+3d) | 2013-02-04 → 2013-02-07 (+3d) |  | 36.66d → 34.26d |  |  |
| 12 | Whammo Climb Mechanism Done | 2013-02-13 → 2013-02-14 (+1d) | 2013-02-13 → 2013-02-14 (+1d) |  | 31.66d → 30.66d |  |  |
| 31 | **Fabricate Robot Parts** | 2013-01-24 → 2013-01-28 (+4d) | 2013-01-31 → 2013-02-04 (+4d) |  | 31.36d → 29.66d | 17, 5 → 17, 5, 23 |  |
| 32 | WhammoA Robot Parts | 2013-01-24 → 2013-01-28 (+4d) | 2013-01-31 → 2013-02-04 (+4d) |  | 31.36d → 29.66d |  |  |
| 33 | WhammoB Robot Parts | 2013-01-24 → 2013-01-28 (+4d) | 2013-01-31 → 2013-02-04 (+4d) |  | 31.36d → 29.66d |  |  |
| 34 | **Assemble Drive Frame** | 2013-02-02 → 2013-02-06 (+4d) | 2013-02-07 → 2013-02-11 (+4d) |  | 31.66d → 29.66d |  |  |
| 35 | WhammoA Assemble Drive Frame | 2013-02-02 → 2013-02-06 (+4d) | 2013-02-02 → 2013-02-06 (+4d) |  | 31.66d → 29.66d |  |  |
| 36 | WhammoA Wiring for Drive System | 2013-02-04 → 2013-02-07 (+3d) | 2013-02-04 → 2013-02-07 (+3d) |  | 31.66d → 29.66d |  | resources Hugh Carry; Andrew Verheyden; Robert Myszka; James Carr → Hugh Carry; Robert Myszka; James Carr |
| 37 | WhammoA Mechanical Testing for Drive Frame | 2013-02-06 → 2013-02-09 (+3d) | 2013-02-06 → 2013-02-09 (+3d) |  | 32.56d → 30.56d |  |  |
| 38 | WhammoB Assemble Drive Frame | 2013-02-02 → 2013-02-06 (+4d) | 2013-02-02 → 2013-02-06 (+4d) |  | 32.66d → 30.66d |  |  |
| 39 | WhammoB Wiring for Drive System | 2013-02-06 → 2013-02-09 (+3d) | 2013-02-06 → 2013-02-09 (+3d) |  | 31.66d → 29.66d |  | resources Hugh Carry; Andrew Verheyden; Robert Myszka; James Carr → Andrew Verheyden; Robert Myszka; James Carr |
| 40 | WhammoB Mechanical Testing for Drive Frame | 2013-02-07 → 2013-02-11 (+4d) | 2013-02-07 → 2013-02-11 (+4d) |  | 31.66d → 29.66d |  |  |
| 41 | **Assemble Frisbee Collector** | 2013-02-02 → 2013-02-06 (+4d) | 2013-02-07 → 2013-02-09 (+2d) | 4d → 2.1d | 31.36d → 31.76d |  |  |
| 42 | WhammoA Assemble Frisbee Collector | 2013-02-02 → 2013-02-06 (+4d) | 2013-02-02 → 2013-02-06 (+4d) |  | 34.16d → 32.26d |  | resources none → Blair Hulaj; Robert Myszka |
| 43 | WhammoA Wiring for Frisbee Collector | 2013-02-04 → 2013-02-07 (+3d) | 2013-02-04 → 2013-02-07 (+3d) | 0.1d → 0.5d | 34.16d → 32.26d |  | resources none → Blair Hulaj |
| 44 | WhammoA Mechanical Testing for Frisbee Collector | 2013-02-04 → 2013-02-07 (+3d) | 2013-02-04 → 2013-02-07 (+3d) |  | 34.16d → 32.26d |  | resources none → Matthew Bailey; Robert Myszka |
| 45 | WhammoB Assemble Frisbee Collector | 2013-02-02 → 2013-02-06 (+4d) | 2013-02-04 → 2013-02-06 (+2d) | 2d → 1d | 31.36d → 31.76d |  | resources none → Bruno Chiaragato; Liam Pelly |
| 46 | WhammoB Wiring for Frisbee Collector | 2013-02-06 → 2013-02-07 (+1d) | 2013-02-06 → 2013-02-07 (+1d) |  | 31.36d → 31.76d |  | resources none → Bruno Chiaragato |
| 47 | WhammoB Mechanical Testing for Frisbee Collector | 2013-02-07 → 2013-02-09 (+2d) | 2013-02-07 → 2013-02-09 (+2d) | 1d → 0.1d | 31.36d → 31.76d |  | resources none → Matthew Bailey; Liam Pelly |
| 48 | **Assemble Shooter** |  |  | 2.5d → 2d | 31.36d → 31.76d |  |  |
| 49 | WhammoA Assemble Shooter |  | 2013-02-09 → 2013-02-11 (+2d) | 1d → 1.25d | 31.36d → 31.76d |  | resources none → Brandon Bates; Bruno Chiaragato; Andrew Verheyden; Liam Pelly |
| 50 | WhammoA Wiring for Shooter |  |  | 0.5d → 0.25d | 31.36d → 31.76d |  | resources none → Bruno Chiaragato; Andrew Verheyden |
| 51 | WhammoA Mechanical Testing for Shooter |  |  | 1d → 0.5d | 31.36d → 31.76d |  | resources none → Andrew Verheyden; Matthew Bailey |
| 52 | WhammoB Assemble Shooter |  | 2013-02-09 → 2013-02-11 (+2d) | 1d → 1.25d | 31.36d → 31.76d |  | resources none → Brandon Bates; Bruno Chiaragato; Andrew Verheyden; Liam Pelly |
| 53 | WhammoB Wiring for Shooter |  |  | 0.5d → 0.25d | 31.36d → 31.76d |  | resources none → Bruno Chiaragato; Andrew Verheyden |
| 54 | WhammoB Mechanical Testing for Shooter |  |  | 1d → 0.5d | 31.36d → 31.76d |  | resources none → Andrew Verheyden; Matthew Bailey |
| 55 | **Assemble Climber** | 2013-02-07 → 2013-02-11 (+4d) | 2013-02-13 → 2013-02-14 (+1d) | 3.1d → 2.1d | 31.66d → 30.66d |  |  |
| 56 | WhammoA Assemble Climber | 2013-02-07 → 2013-02-11 (+4d) | 2013-02-09 → 2013-02-13 (+4d) | 1d → 1.5d | 31.66d → 30.66d |  | resources none → Blair Hulaj; Liam Pelly; Bruno Chiaragato; Brandon Bates; Andrew Verheyden |
| 57 | WhammoA Wiring for Climber | 2013-02-09 → 2013-02-13 (+4d) | 2013-02-09 → 2013-02-13 (+4d) |  | 31.66d → 30.66d |  | resources none → Liam Pelly; Andrew Verheyden |
| 58 | WhammoA Mechanical Testing for Climber | 2013-02-09 → 2013-02-13 (+4d) | 2013-02-13 → 2013-02-14 (+1d) | 2d → 0.5d | 31.66d → 30.66d |  | resources none → Blair Hulaj; Matthew Bailey; Andrew Verheyden |
| 59 | WhammoB Assemble Climber | 2013-02-07 → 2013-02-11 (+4d) | 2013-02-09 → 2013-02-13 (+4d) | 1d → 1.5d | 31.66d → 30.66d |  | resources none → Blair Hulaj; Liam Pelly; Bruno Chiaragato; Brandon Bates; Andrew Verheyden |
| 60 | WhammoB Wiring for Climber | 2013-02-09 → 2013-02-13 (+4d) | 2013-02-09 → 2013-02-13 (+4d) |  | 31.66d → 30.66d |  | resources none → Liam Pelly; Andrew Verheyden |
| 61 | WhammoB Mechanical Testing for Climber | 2013-02-09 → 2013-02-13 (+4d) | 2013-02-13 → 2013-02-14 (+1d) | 2d → 0.5d | 31.66d → 30.66d |  | resources none → Matthew Bailey; Andrew Verheyden |
