# FIRST_2994_2013_SW

How a schedule from MS Project changed from version to version. A marks actual dates.

## Version 1 (saved 2013-01-19)

| ID | WBS | Task | Duration | Start | Finish | Predecessors | Total float | Constraint |
| --- | --- | --- | --- | --- | --- | --- | --- | --- |
| 1 | 1 | **Software Infrastructure** | 44d | 2013-01-05 | 2013-03-21 |  | 9.86d |  |
| 2 |  | Install Labview/Development Environment | 6d | 2013-01-05 | 2013-01-14 |  | 9.86d |  |
| 3 |  | Github Repository Setup | 2d | 2013-01-05 | 2013-01-07 |  | 38.86d | start no earlier than 2013-01-05 |
| 4 |  | GitHub Training | 1d | 2013-01-16 | 2013-01-16 | 2, 3 | 34.86d |  |
| 5 |  | Handle Github Pull Requests | 38d | 2013-01-16 | 2013-03-21 | 2 | 9.86d |  |
| 6 |  | Robot Simulator Research | 1d | 2013-01-17 | 2013-01-17 | 2, 4 | 36.86d |  |
| 7 |  | FIRST Touch I/O Module | 1d | 2013-01-17 | 2013-01-17 | 2, 4 | 45.86d |  |
| 8 |  | Labview Programming | 1d | 2013-01-19 | 2013-01-19 | 2, 6, 4 | 36.86d |  |
| 9 |  | Robot Builder | 1d | 2013-01-17 | 2013-01-17 | 2, 4 | 45.86d |  |
| 10 |  | Software Development Start | 0d | 2013-01-16 | 2013-01-16 | 2, 3, 4 | 34.86d |  |
| 11 |  | Software for Compressed Air Charging | 1d | 2013-01-17 | 2013-01-17 | 10 | 44.86d |  |
| 12 | 4 | **Software for Autonomous** | 5d? | 2013-01-17 | 2013-01-24 |  | 35.86d |  |
| 13 |  | Dead Reckoning | 3d | 2013-01-19 | 2013-01-23 | 10, 20 | 34.86d |  |
| 14 |  | Collecting Frisbees from Floor | 1d? | 2013-01-17 | 2013-01-17 | 10 | 42.86d |  |
| 15 |  | Shooter (Fixed Speed) | 1d | 2013-01-24 | 2013-01-24 | 10, 13 | 34.86d |  |
| 16 |  | Autonomous Coding Complete | 0d | 2013-01-24 | 2013-01-24 | 13, 14, 15 | 41.86d |  |
| 17 | 5 | **Software for Teleop** | 9d? | 2013-01-16 | 2013-01-31 |  | 34.86d |  |
| 18 | 5.1 | **R/C Driving** | 4d? | 2013-01-17 | 2013-01-23 | 10 | 34.86d |  |
| 19 |  | Document R/C Driving | 2d | 2013-01-19 | 2013-01-21 | 20 | 39.86d |  |
| 20 |  | Arcade Drive | 1d | 2013-01-17 | 2013-01-17 |  | 34.86d |  |
| 21 |  | Manual Supershifters | 1d | 2013-01-23 | 2013-01-23 | 20, 19 | 39.86d |  |
| 22 |  | Commit Manual R/C Driving to GitHub | 0d | 2013-01-23 | 2013-01-23 | 21 | 39.86d |  |
| 23 |  | Automatic Supershifters | 1d? | 2013-01-17 | 2013-01-17 |  | 42.86d |  |
| 24 |  | Commit Automatic Supershifters | 1d? | 2013-01-17 | 2013-01-17 |  | 42.86d |  |
| 25 |  | R/C Frisbees from Feeder Stations | 0d | 2013-01-16 | 2013-01-16 | 10 | 43.86d |  |
| 26 | 5.3 | **R/C Frisbees from Floor** | 3d | 2013-01-21 | 2013-01-24 | 10 | 36.86d |  |
| 27 |  | Document R/C Frisbees from Floor | 1d | 2013-01-21 | 2013-01-21 | 8 | 36.86d |  |
| 28 |  | Code R/C Frisbees from Floor | 2d | 2013-01-23 | 2013-01-24 | 27 | 36.86d |  |
| 29 |  | Commit R/C Frisbees from Floor to GitHub | 0d | 2013-01-24 | 2013-01-24 | 28 | 36.86d |  |
| 30 | 5.4 | **R/C Shooting** | 4d? | 2013-01-26 | 2013-01-31 | 10, 15 | 34.86d |  |
| 31 |  | Document R/C Shooting | 1d? | 2013-01-26 | 2013-01-26 |  | 34.86d |  |
| 32 |  | Code Shooter Motor Control | 1d? | 2013-01-28 | 2013-01-28 | 31 | 34.86d |  |
| 33 |  | Prototype PID Speed Control on Plyboy | 1d? | 2013-01-30 | 2013-01-30 | 32 | 34.86d |  |
| 34 |  | Push Shooter Motor Control Code to GitHub | 1d? | 2013-01-31 | 2013-01-31 | 33 | 34.86d |  |
| 35 |  | Code Index Motor | 1d? | 2013-01-26 | 2013-01-26 | 29 | 36.86d |  |
| 36 |  | Push Index Motor Control Code to GitHub | 1d? | 2013-01-28 | 2013-01-28 | 35 | 36.86d |  |
| 37 |  | Climbing | 1d? | 2013-01-17 | 2013-01-17 | 10 | 44.86d |  |
| 38 |  | Camera View | 2d | 2013-01-21 | 2013-01-23 | 10, 8 | 42.86d |  |
| 39 |  | Teleop Coding Complete | 0d | 2013-01-31 | 2013-01-31 | 18, 25, 26, 30, 37, 38 | 37.86d |  |
| 40 |  | Coding Complete | 0d | 2013-01-31 | 2013-01-31 | 16, 39 | 37.86d |  |
| 41 | 7 | **Build Season Milestones** | 26d | 2013-01-05 | 2013-02-19 |  | 27.86d |  |
| 42 |  | Kickoff | 0d | 2013-01-05 | 2013-01-05 |  | 53.86d |  |
| 43 |  | Stop-Build Day | 0d | 2013-02-19 | 2013-02-19 |  | 27.86d | start no earlier than 2013-02-19 |
| 44 | 8 | **Hardware Milestones** | 21.29d | 2013-01-05 | 2013-02-11 |  | 31.57d |  |
| 45 |  | Plyboy Compressed Air Charging System Done | 0d | 2013-01-05 | 2013-01-05 |  | 52.86d |  |
| 46 |  | Whammo Compressed Air Charging System Done | 0d | 2013-01-05 | 2013-01-05 |  | 52.86d |  |
| 47 |  | Whammo Driving Mechanism Done | 0d | 2013-01-05 | 2013-01-05 |  | 50.86d |  |
| 48 |  | Whammo Frisbee Collector Done | 0d | 2013-01-05 | 2013-01-05 |  | 50.86d |  |
| 49 |  | Whammo Shooter Done | 0d | 2013-01-05 | 2013-01-05 |  | 50.86d |  |
| 50 |  | Whammo Climb Mechanism Done | 0d | 2013-01-05 | 2013-01-05 |  | 52.86d |  |
| 51 |  | Whammo Hardware Complete | 0d | 2013-02-11 | 2013-02-11 |  | 30.57d | finish no earlier than 2013-02-11 |
| 52 | 9 | **Software Unit Testing** | 10d? | 2013-01-17 | 2013-02-02 |  | 36.86d |  |
| 53 |  | Unit Test Compressed Air Charging on Plyboy | 1d? | 2013-01-19 | 2013-01-19 | 45, 11 | 44.86d |  |
| 54 |  | Unit Test Compressed Air Charging on Whammo | 1d? | 2013-01-19 | 2013-01-19 | 46, 11 | 44.86d |  |
| 55 |  | Unit Test Autonomous Dead Reckoning on Swish | 1d? | 2013-01-24 | 2013-01-24 | 13 | 39.86d |  |
| 56 |  | Unit Test Autonomous Dead Reckoning on Whammo | 1d? | 2013-01-24 | 2013-01-24 | 13, 47 | 39.86d |  |
| 57 |  | Unit Test Autonomous Frisbee Collection from Floor | 1d? | 2013-01-19 | 2013-01-19 | 14, 48 | 42.86d |  |
| 58 |  | Unit Test Autonomous Shooter | 1d? | 2013-01-26 | 2013-01-26 | 15, 49 | 38.86d |  |
| 59 |  | Unit Test R/C Driving | 1d? | 2013-01-24 | 2013-01-24 | 18, 47 | 39.86d |  |
| 60 |  | Unit Test R/C Frisbees from Feeder Station | 1d? | 2013-01-17 | 2013-01-17 | 25, 48 | 43.86d |  |
| 61 |  | Unit Test R/C Frisbees from Floor | 1d? | 2013-01-26 | 2013-01-26 | 26, 48 | 38.86d |  |
| 62 |  | Unit test R/C Shooting | 1d? | 2013-02-02 | 2013-02-02 | 30, 49 | 34.86d |  |
| 63 |  | Unit Test Climbing | 1d? | 2013-01-19 | 2013-01-19 | 37, 50 | 44.86d |  |
| 64 |  | Unit Test Autonomous Software Done | 0d | 2013-01-26 | 2013-01-26 | 55, 56, 57, 58 | 38.86d |  |
| 65 |  | Unit Test Teleop Software Done | 0d | 2013-02-02 | 2013-02-02 | 59, 60, 61, 62 | 34.86d |  |
| 66 | 10 | **Integration Testing** | 2d | 2013-02-11 | 2013-02-14 |  | 30.57d |  |
| 67 |  | Integration Test Autonomous | 2d | 2013-02-11 | 2013-02-14 | 64, 51 | 30.57d |  |
| 68 |  | Integration Test Teleop | 2d | 2013-02-11 | 2013-02-14 | 65, 51 | 30.57d |  |
| 69 | 11 | **Competition Season** | 18.86d | 2013-03-07 | 2013-04-08 |  | 0d |  |
| 70 |  | FRC Greater Toronto East Regional | 6.86d | 2013-03-07 | 2013-03-18 |  | 12d | start no earlier than 2013-03-07 |

| ID | WBS | Task | Duration | Start | Finish | Total float | Constraint |
| --- | --- | --- | --- | --- | --- | --- | --- |
| 71 |  | FRC Greater Toronto West Regional | 6.86d | 2013-03-28 | 2013-04-08 | 0d | start no earlier than 2013-03-28 |
| 72 | 12 | **Time off** | 41d | 2013-01-24 | 2013-04-04 | 1.86d |  |
| 73 |  | Dan unavailable 1 | 1d | 2013-02-09 | 2013-02-09 | 32.86d | start no earlier than 2013-02-08 |
| 74 | 12.2 | **Kyle Unavailable** | 41d | 2013-01-24 | 2013-04-04 | 1.86d |  |
| 75 |  | Kyle Unavailable 1 | 1d | 2013-01-24 | 2013-01-24 | 41.86d | start no earlier than 2013-01-24 |
| 76 |  | Kyle Unavailable 2 | 1d | 2013-01-31 | 2013-01-31 | 37.86d | start no earlier than 2013-01-31 |
| 77 |  | Kyle Unavailable 3 | 1d | 2013-02-07 | 2013-02-07 | 33.86d | start no earlier than 2013-02-07 |
| 78 |  | Kyle Unavailable 4 | 1d | 2013-02-14 | 2013-02-14 | 29.86d | start no earlier than 2013-02-14 |
| 79 |  | Kyle Unavailable 5 | 1d | 2013-02-21 | 2013-02-21 | 25.86d | start no earlier than 2013-02-21 |
| 80 |  | Kyle Unavailable 6 | 1d | 2013-02-28 | 2013-02-28 | 21.86d | start no earlier than 2013-02-28 |
| 81 |  | Kyle Unavailable 7 | 1d | 2013-03-07 | 2013-03-07 | 17.86d | start no earlier than 2013-03-07 |
| 82 |  | Kyle Unavailable 8 | 1d | 2013-03-14 | 2013-03-14 | 13.86d | start no earlier than 2013-03-14 |
| 83 |  | Kyle Unavailable 9 | 1d | 2013-03-21 | 2013-03-21 | 9.86d | start no earlier than 2013-03-21 |
| 84 |  | Kyle Unavailable 10 | 1d | 2013-03-28 | 2013-03-28 | 5.86d | start no earlier than 2013-03-28 |
| 85 |  | Kyle Unavailable 11 | 1d | 2013-04-04 | 2013-04-04 | 1.86d | start no earlier than 2013-04-04 |

## Version 2 (saved 2013-01-24)

Note of the change: Updated Software plan as discussed Jan 24

Last finish stays 2013-04-08.

Added:

| ID | Task | Duration | Start | Finish | Predecessors | Constraint | Resources |
| --- | --- | --- | --- | --- | --- | --- | --- |
| 13 | Document Autonomous Behaviour | 1d? | 2013-01-05 | 2013-01-05 |  |  |  |
| 22 | Pneumatics Ready on Plyboy | 0d | 2013-01-28 | 2013-01-28 | 21 | finish no earlier than 2013-01-28 |  |
| 40 | Document Climbing | 1d | 2013-01-28 | 2013-01-28 |  | start no earlier than 2013-01-28 | Ross Andress; Laurence Cunnane |
| 41 | Code Climber Arm | 2d | 2013-01-30 | 2013-01-31 | 40 |  | Ross Andress |
| 42 | Code Claw | 2d | 2013-01-30 | 2013-01-31 | 40 |  | Laurence Cunnane |
| 43 | Code Claw Sensor | 2d | 2013-02-02 | 2013-02-04 | 40, 42 |  | Laurence Cunnane |
| 44 | Push Climbing Code to GitHub | 0d | 2013-02-04 | 2013-02-04 | 41, 42, 43 |  | Ross Andress; Laurence Cunnane |

Changed:

| ID | Task | Start | Finish | Duration | Total float | Predecessors | Other |
| --- | --- | --- | --- | --- | --- | --- | --- |
| 1 | **Software Infrastructure** |  |  |  |  |  | baseline start none → 2013-01-05; baseline finish none → 2013-03-21 |
| 2 | Install Labview/Development Environment |  |  |  |  |  | baseline start none → 2013-01-05; baseline finish none → 2013-01-14 |
| 3 | Github Repository Setup |  |  |  |  |  | baseline start none → 2013-01-05; baseline finish none → 2013-01-07 |
| 4 | GitHub Training |  |  |  |  |  | baseline start none → 2013-01-16; baseline finish none → 2013-01-16 |
| 5 | Handle Github Pull Requests |  |  |  |  |  | baseline start none → 2013-01-16; baseline finish none → 2013-03-21 |
| 6 | Robot Simulator Research |  |  |  |  |  | baseline start none → 2013-01-17; baseline finish none → 2013-01-17 |
| 7 | FIRST Touch I/O Module |  |  |  |  |  | baseline start none → 2013-01-17; baseline finish none → 2013-01-17 |
| 8 | Labview Programming |  | 2013-01-19 → 2013-01-23 (+4d) | 1d → 3d | 36.86d → 35.86d |  | baseline start none → 2013-01-19; baseline finish none → 2013-01-19 |
| 9 | Robot Builder |  |  |  |  |  | baseline start none → 2013-01-17; baseline finish none → 2013-01-17 |
| 10 | Software Development Start |  |  |  |  |  | baseline start none → 2013-01-16; baseline finish none → 2013-01-16 |
| 11 | Software for Compressed Air Charging |  |  |  |  |  | baseline start none → 2013-01-17; baseline finish none → 2013-01-17 |
| 12 | **Software for Autonomous** | 2013-01-17 → 2013-01-05 (-12d) |  | 5d? → 12d? | 35.86d → 40.86d |  | baseline start none → 2013-01-17; baseline finish none → 2013-01-24 |
| 14 | Dead Reckoning |  |  |  | 34.86d → 32.86d |  | baseline start none → 2013-01-19; baseline finish none → 2013-01-23 |
| 15 | Collecting Frisbees from Floor |  |  |  |  |  | baseline start none → 2013-01-17; baseline finish none → 2013-01-17 |
| 16 | Shooter (Fixed Speed) |  |  |  | 34.86d → 32.86d |  | baseline start none → 2013-01-24; baseline finish none → 2013-01-24 |
| 17 | Autonomous Coding Complete |  |  |  |  |  | baseline start none → 2013-01-24; baseline finish none → 2013-01-24 |
| 18 | **Software for Teleop** |  | 2013-01-31 → 2013-02-04 (+4d) | 9d? → 11d | 34.86d → 32.86d |  | baseline start none → 2013-01-16; baseline finish none → 2013-01-31 |
| 19 | **R/C Driving** |  | 2013-01-23 → 2013-02-02 (+10d) | 4d? → 9.29d | 34.86d → 32.86d |  | baseline start none → 2013-01-17; baseline finish none → 2013-01-23 |
| 20 | Document R/C Driving |  |  |  |  |  | baseline start none → 2013-01-19; baseline finish none → 2013-01-21 |
| 21 | Arcade Drive |  |  |  | 34.86d → 32.86d |  | baseline start none → 2013-01-17; baseline finish none → 2013-01-17 |
| 23 | Manual Supershifters | 2013-01-23 → 2013-01-28 (+5d) | 2013-01-23 → 2013-01-30 (+7d) |  | 39.86d → 36.57d | 21, 20 → 20, 22 | baseline start none → 2013-01-23; baseline finish none → 2013-01-23 |
| 24 | Commit Manual R/C Driving to GitHub | 2013-01-23 → 2013-01-30 (+7d) | 2013-01-23 → 2013-01-30 (+7d) |  | 39.86d → 36.57d |  | baseline start none → 2013-01-23; baseline finish none → 2013-01-23 |
| 25 | Automatic Supershifters | 2013-01-17 → 2013-01-28 (+11d) | 2013-01-17 → 2013-01-31 (+14d) | 1d? → 2d | 42.86d → 34.57d | none → 22 | resources none → Celina Vivian; baseline start none → 2013-01-17; baseline finish none → 2013-01-17 |
| 26 | Commit Automatic Supershifters | 2013-01-17 → 2013-01-31 (+14d) | 2013-01-17 → 2013-02-02 (+16d) | 1d? → 1d | 42.86d → 34.57d | none → 25 | resources none → Celina Vivian; baseline start none → 2013-01-17; baseline finish none → 2013-01-17 |
| 27 | R/C Frisbees from Feeder Stations |  |  |  |  |  | baseline start none → 2013-01-16; baseline finish none → 2013-01-16 |
| 28 | **R/C Frisbees from Floor** | 2013-01-21 → 2013-01-24 (+3d) | 2013-01-24 → 2013-01-28 (+4d) |  | 36.86d → 35.86d |  | baseline start none → 2013-01-21; baseline finish none → 2013-01-24 |
| 29 | Document R/C Frisbees from Floor | 2013-01-21 → 2013-01-24 (+3d) | 2013-01-21 → 2013-01-24 (+3d) |  | 36.86d → 35.86d |  | baseline start none → 2013-01-21; baseline finish none → 2013-01-21 |
| 30 | Code R/C Frisbees from Floor | 2013-01-23 → 2013-01-26 (+3d) | 2013-01-24 → 2013-01-28 (+4d) |  | 36.86d → 35.86d |  | baseline start none → 2013-01-23; baseline finish none → 2013-01-24 |
| 31 | Commit R/C Frisbees from Floor to GitHub | 2013-01-24 → 2013-01-28 (+4d) | 2013-01-24 → 2013-01-28 (+4d) |  | 36.86d → 35.86d |  | baseline start none → 2013-01-24; baseline finish none → 2013-01-24 |
| 32 | **R/C Shooting** |  | 2013-01-31 → 2013-02-04 (+4d) | 4d? → 6d | 34.86d → 32.86d |  | baseline start none → 2013-01-26; baseline finish none → 2013-01-31 |
| 33 | Document R/C Shooting |  |  | 1d? → 1d | 34.86d → 32.86d |  | resources Jack McCracken [90%] → Will Prado; baseline start none → 2013-01-26; baseline finish none → 2013-01-26 |
| 34 | Code Shooter Motor Control |  |  | 1d? → 1d | 34.86d → 32.86d |  | resources Jack McCracken [90%] → Will Prado; baseline start none → 2013-01-28; baseline finish none → 2013-01-28 |
| 35 | Prototype PID Speed Control on Plyboy |  | 2013-01-30 → 2013-02-04 (+5d) | 1d? → 4d | 34.86d → 32.86d |  | baseline start none → 2013-01-30; baseline finish none → 2013-01-30 |
| 36 | Push Shooter Motor Control Code to GitHub | 2013-01-31 → 2013-02-04 (+4d) | 2013-01-31 → 2013-02-04 (+4d) | 1d? → 0d | 34.86d → 32.86d |  | resources Jack McCracken [90%] → Will Prado; baseline start none → 2013-01-31; baseline finish none → 2013-01-31 |
| 37 | Code Index Motor | 2013-01-26 → 2013-01-30 (+4d) | 2013-01-26 → 2013-01-30 (+4d) | 1d? → 1d | 36.86d → 35.86d |  | resources Gabrielle Genereux → Will Prado; baseline start none → 2013-01-26; baseline finish none → 2013-01-26 |
| 38 | Push Index Motor Control Code to GitHub | 2013-01-28 → 2013-01-30 (+2d) | 2013-01-28 → 2013-01-30 (+2d) | 1d? → 0d | 36.86d → 35.86d |  | resources Gabrielle Genereux → Will Prado; baseline start none → 2013-01-28; baseline finish none → 2013-01-28 |
| 39 | **Climbing** | 2013-01-17 → 2013-01-28 (+11d) | 2013-01-17 → 2013-02-04 (+18d) | 1d? → 5d | 44.86d → 34.86d |  | baseline start none → 2013-01-17; baseline finish none → 2013-01-17 |
| 45 | Camera View | 2013-01-21 → 2013-01-24 (+3d) | 2013-01-23 → 2013-01-26 (+3d) |  | 42.86d → 40.86d |  | baseline start none → 2013-01-21; baseline finish none → 2013-01-23 |
| 46 | Teleop Coding Complete | 2013-01-31 → 2013-02-04 (+4d) | 2013-01-31 → 2013-02-04 (+4d) |  | 37.86d → 35.86d |  | baseline start none → 2013-01-31; baseline finish none → 2013-01-31 |
| 47 | Coding Complete | 2013-01-31 → 2013-02-04 (+4d) | 2013-01-31 → 2013-02-04 (+4d) |  | 37.86d → 35.86d |  | baseline start none → 2013-01-31; baseline finish none → 2013-01-31 |
| 48 | **Build Season Milestones** |  |  |  |  |  | baseline start none → 2013-01-05; baseline finish none → 2013-02-19 |
| 49 | Kickoff |  |  |  |  |  | baseline start none → 2013-01-05; baseline finish none → 2013-01-05 |
| 50 | Stop-Build Day |  |  |  |  |  | baseline start none → 2013-02-19; baseline finish none → 2013-02-19 |
| 51 | **Hardware Milestones** |  |  |  |  |  | baseline start none → 2013-01-05; baseline finish none → 2013-02-11 |
| 52 | Plyboy Compressed Air Charging System Done |  |  |  |  |  | baseline start none → 2013-01-05; baseline finish none → 2013-01-05 |
| 53 | Whammo Compressed Air Charging System Done |  |  |  |  |  | baseline start none → 2013-01-05; baseline finish none → 2013-01-05 |
| 54 | Whammo Driving Mechanism Done |  |  |  |  |  | baseline start none → 2013-01-05; baseline finish none → 2013-01-05 |
| 55 | Whammo Frisbee Collector Done |  |  |  |  |  | baseline start none → 2013-01-05; baseline finish none → 2013-01-05 |
| 56 | Whammo Shooter Done |  |  |  |  |  | baseline start none → 2013-01-05; baseline finish none → 2013-01-05 |
| 57 | Whammo Climb Mechanism Done |  |  |  |  |  | baseline start none → 2013-01-05; baseline finish none → 2013-01-05 |
| 58 | Whammo Hardware Complete |  |  |  |  |  | baseline start none → 2013-02-11; baseline finish none → 2013-02-11 |
| 59 | **Software Unit Testing** |  | 2013-02-02 → 2013-02-06 (+4d) | 10d? → 12d? | 36.86d → 34.86d |  | baseline start none → 2013-01-17; baseline finish none → 2013-02-02 |
| 60 | Unit Test Compressed Air Charging on Plyboy |  |  |  |  |  | baseline start none → 2013-01-19; baseline finish none → 2013-01-19 |
| 61 | Unit Test Compressed Air Charging on Whammo |  |  |  |  |  | baseline start none → 2013-01-19; baseline finish none → 2013-01-19 |
| 62 | Unit Test Autonomous Dead Reckoning on Swish |  |  |  |  |  | baseline start none → 2013-01-24; baseline finish none → 2013-01-24 |
| 63 | Unit Test Autonomous Dead Reckoning on Whammo |  |  |  |  |  | baseline start none → 2013-01-24; baseline finish none → 2013-01-24 |
| 64 | Unit Test Autonomous Frisbee Collection from Floor |  |  |  |  |  | baseline start none → 2013-01-19; baseline finish none → 2013-01-19 |
| 65 | Unit Test Autonomous Shooter |  |  |  |  |  | baseline start none → 2013-01-26; baseline finish none → 2013-01-26 |
| 66 | Unit Test R/C Driving | 2013-01-24 → 2013-02-02 (+9d) | 2013-01-24 → 2013-02-04 (+11d) |  | 39.86d → 34.57d |  | baseline start none → 2013-01-24; baseline finish none → 2013-01-24 |
| 67 | Unit Test R/C Frisbees from Feeder Station |  |  |  |  |  | baseline start none → 2013-01-17; baseline finish none → 2013-01-17 |
| 68 | Unit Test R/C Frisbees from Floor | 2013-01-26 → 2013-01-30 (+4d) | 2013-01-26 → 2013-01-30 (+4d) |  | 38.86d → 36.86d |  | baseline start none → 2013-01-26; baseline finish none → 2013-01-26 |
| 69 | Unit test R/C Shooting | 2013-02-02 → 2013-02-06 (+4d) | 2013-02-02 → 2013-02-06 (+4d) |  | 34.86d → 32.86d |  | baseline start none → 2013-02-02; baseline finish none → 2013-02-02 |
| 70 | Unit Test Climbing | 2013-01-19 → 2013-02-06 (+18d) | 2013-01-19 → 2013-02-06 (+18d) |  | 44.86d → 34.86d |  | baseline start none → 2013-01-19; baseline finish none → 2013-01-19 |
| 71 | Unit Test Autonomous Software Done |  |  |  |  |  | baseline start none → 2013-01-26; baseline finish none → 2013-01-26 |
| 72 | Unit Test Teleop Software Done | 2013-02-02 → 2013-02-06 (+4d) | 2013-02-02 → 2013-02-06 (+4d) |  | 34.86d → 32.86d |  | baseline start none → 2013-02-02; baseline finish none → 2013-02-02 |
| 73 | **Integration Testing** |  |  |  |  |  | baseline start none → 2013-02-11; baseline finish none → 2013-02-14 |
| 74 | Integration Test Autonomous |  |  |  |  |  | baseline start none → 2013-02-11; baseline finish none → 2013-02-14 |
| 75 | Integration Test Teleop |  |  |  |  |  | baseline start none → 2013-02-11; baseline finish none → 2013-02-14 |
| 76 | **Competition Season** |  |  |  |  |  | baseline start none → 2013-03-07; baseline finish none → 2013-04-08 |
| 77 | FRC Greater Toronto East Regional |  |  |  |  |  | baseline start none → 2013-03-07; baseline finish none → 2013-03-18 |

| ID | Task | Other |
| --- | --- | --- |
| 78 | FRC Greater Toronto West Regional | baseline start none → 2013-03-28; baseline finish none → 2013-04-08 |
| 79 | **Time off** | baseline start none → 2013-01-24; baseline finish none → 2013-04-04 |
| 80 | Dan unavailable 1 | baseline start none → 2013-02-09; baseline finish none → 2013-02-09 |
| 81 | **Kyle Unavailable** | baseline start none → 2013-01-24; baseline finish none → 2013-04-04 |
| 82 | Kyle Unavailable 1 | baseline start none → 2013-01-24; baseline finish none → 2013-01-24 |
| 83 | Kyle Unavailable 2 | baseline start none → 2013-01-31; baseline finish none → 2013-01-31 |
| 84 | Kyle Unavailable 3 | baseline start none → 2013-02-07; baseline finish none → 2013-02-07 |
| 85 | Kyle Unavailable 4 | baseline start none → 2013-02-14; baseline finish none → 2013-02-14 |
| 86 | Kyle Unavailable 5 | baseline start none → 2013-02-21; baseline finish none → 2013-02-21 |
| 87 | Kyle Unavailable 6 | baseline start none → 2013-02-28; baseline finish none → 2013-02-28 |
| 88 | Kyle Unavailable 7 | baseline start none → 2013-03-07; baseline finish none → 2013-03-07 |
| 89 | Kyle Unavailable 8 | baseline start none → 2013-03-14; baseline finish none → 2013-03-14 |
| 90 | Kyle Unavailable 9 | baseline start none → 2013-03-21; baseline finish none → 2013-03-21 |
| 91 | Kyle Unavailable 10 | baseline start none → 2013-03-28; baseline finish none → 2013-03-28 |
| 92 | Kyle Unavailable 11 | baseline start none → 2013-04-04; baseline finish none → 2013-04-04 |
